# ME

How a schedule from MS Project changed from version to version. A marks actual dates.

## Version 1 (saved 2018-09-19)

| ID | WBS | Task | Duration | Start | Finish | Predecessors | Complete | Total float | Constraint |
| --- | --- | --- | --- | --- | --- | --- | --- | --- | --- |
| 1 | 1 | **亚新科双环 MES III 期项目（批次管理系统）** | 61d? | 2018-07-24 A | 2018-10-17 |  | 51% | 0d |  |
| 2 | 1.1 | **出入库** | 32d? | 2018-07-24 A | 2018-09-05 |  | 83% | 29d |  |
| 3 | 1.1.1 | **粗检库** | 14d | 2018-07-24 A | 2018-08-10 A |  | 100% |  |  |
| 4 | 1.1.1.1 | **配置** | 2d | 2018-07-24 A | 2018-07-25 A |  | 100% |  |  |
| 5 |  | 半成品入库 | 4h | 2018-07-24 A | 2018-07-24 A |  | 100% |  |  |
| 6 |  | 半成品配送 | 1d | 2018-07-24 A | 2018-07-25 A | 5 | 100% |  |  |
| 7 |  | 半成品出库 | 4h | 2018-07-25 A | 2018-07-25 A | 6 | 100% |  |  |
| 8 |  | 实施 | 3d | 2018-08-08 A | 2018-08-10 A | 4 | 100% |  |  |
| 9 | 1.1.2 | **热磨半成品库房** | 7d? | 2018-08-07 A | 2018-08-15 A |  | 100% |  |  |
| 10 |  | 提供热磨半成品库房的相关数据 | 0d | 2018-08-07 A | 2018-08-07 A |  | 100% |  |  |
| 11 | 1.1.2.2 | **配置** | 2d | 2018-08-07 A | 2018-08-08 A | 10 | 100% |  |  |
| 12 |  | 半成品入库 | 4h | 2018-08-07 A | 2018-08-07 A |  | 100% |  |  |
| 13 |  | 半成品配送 | 1d | 2018-08-07 A | 2018-08-08 A | 12 | 100% |  |  |
| 14 |  | 半成品出库 | 4h | 2018-08-08 A | 2018-08-08 A | 13 | 100% |  |  |
| 15 |  | 实施 | 3d? | 2018-08-13 A | 2018-08-15 A | 11, 3 | 100% |  |  |
| 16 | 1.1.3 | **镀铬半成品库房** | 18d | 2018-08-10 A | 2018-09-04 |  | 70% | 30d |  |
| 17 |  | 提供镀铬半成品库房的相关数据 | 0d | 2018-08-10 A | 2018-08-10 A |  | 100% |  |  |
| 18 | 1.1.3.2 | **配置** | 2d | 2018-08-10 A | 2018-08-13 A | 17 | 100% |  |  |
| 19 |  | 半成品入库 | 4h | 2018-08-10 A | 2018-08-10 A |  | 100% |  |  |
| 20 |  | 半成品配送 | 1d | 2018-08-10 A | 2018-08-13 A | 19 | 100% |  |  |
| 21 |  | 半成品出库 | 4h | 2018-08-13 A | 2018-08-13 A | 20 | 100% |  |  |
| 22 |  | 镀铬库房满足运行条件 | 0d | 2018-08-21 A | 2018-08-21 A |  | 100% |  |  |
| 23 |  | 实施、试运行 | 9d | 2018-08-21 A | 2018-08-31 | 17, 15, 22 | 50% | 32d |  |
| 24 | 1.1.3.5 | **改进** | 4d | 2018-08-30 A | 2018-09-04 A |  | 100% |  |  |
| 25 |  | 增加流转卡和跟踪卡打印内容的备份并重打功能 | 1d | 2018-08-30 A | 2018-08-30 A |  | 100% |  |  |
| 26 |  | 提供维护部分产品的容器容量维护功能，并修改跟踪卡打印 | 3d | 2018-08-31 A | 2018-09-04 A |  | 100% |  |  |
| 27 | 1.1.4 | **成品库房** | 19d? | 2018-08-10 A | 2018-09-05 A |  | 100% |  |  |
| 28 |  | 提供成品库房的相关数据 | 0d | 2018-08-10 A | 2018-08-10 A |  | 100% |  |  |
| 29 | 1.1.4.2 | **配置** | 0.5d | 2018-08-10 A | 2018-08-10 A | 28 | 100% |  |  |
| 30 |  | 产成品入库 | 4h | 2018-08-10 A | 2018-08-10 A |  | 100% |  |  |
| 31 |  | 产品库房满足运行条件 | 0d | 2018-09-05 A | 2018-09-05 A |  | 100% |  |  |
| 32 |  | 实施 | 1d? | 2018-09-05 A | 2018-09-05 A | 28, 23, 31 | 100% |  |  |
| 33 | 1.2 | **生产数据采集** | 38d? | 2018-08-24 A | 2018-10-17 |  | 13% | 0d |  |
| 34 | 1.2.1 | **调质** | 27d? | 2018-08-24 A | 2018-10-02 |  | 6% | 11d |  |
| 35 |  | 提供加热炉相关数据 | 0d | 2018-08-24 A | 2018-08-24 A |  | 100% |  |  |
| 36 |  | 提供清洗炉相关数据 | 0d | 2018-08-24 A | 2018-08-24 A |  | 100% |  |  |
| 37 |  | 提供回火炉相关数据 | 0d | 2018-08-24 A | 2018-08-24 A |  | 100% |  |  |
| 38 |  | 发现用户提供的数据和预期有差异，还需进行沟通 | 1d | 2018-09-05 A | 2018-09-05 A |  | 100% |  |  |
| 39 | 1.2.1.5 | **配置** | 8d? | 2018-09-06 | 2018-09-17 |  |  | 16d |  |
| 40 |  | 加热炉 | 2d? | 2018-09-06 | 2018-09-07 | 35, 38 |  | 16d |  |
| 41 |  | 清洗炉 | 2d? | 2018-09-10 | 2018-09-11 | 40, 36 |  | 16d |  |
| 42 |  | 回火炉 | 2d? | 2018-09-12 | 2018-09-13 | 41, 37 |  | 16d |  |
| 43 |  | 质量检查和确认 | 2d? | 2018-09-14 | 2018-09-17 | 42 |  | 16d |  |
| 44 | 1.2.1.6 | **开发** | 4d | 2018-09-19 | 2018-09-25 |  |  | 0d |  |
| 45 |  | 加热炉生产开发 | 2d | 2018-09-19 | 2018-09-20 |  |  |  |  |
| 46 |  | 清洗炉、回火炉生产开发 | 2d | 2018-09-21 | 2018-09-25 | 45 |  | 11d |  |
| 47 |  | 测试 | 2d? | 2018-09-26 | 2018-09-27 | 39, 44 |  | 11d |  |
| 48 |  | 实施 | 3d? | 2018-09-28 | 2018-10-02 | 47 |  | 11d |  |
| 49 | 1.2.2 | **离子氮化** | 32d? | 2018-09-03 A | 2018-10-17 |  | 40% | 0d |  |
| 50 |  | 提供离子氮化相关数据 | 0d | 2018-09-03 | 2018-09-03 |  |  |  |  |
| 51 |  | 配置 | 2d? | 2018-09-03 A | 2018-09-04 A | 50 | 100% |  |  |
| 52 |  | 满足运行条件 | 0d | 2018-10-15 | 2018-10-15 | 51 |  |  |  |
| 53 |  | 测试 | 1d? | 2018-10-15 | 2018-10-15 | 52 |  | 0d |  |
| 54 |  | 实施 | 2d? | 2018-10-16 | 2018-10-17 | 53 |  | 0d |  |
| 55 | 1.2.3 | **镀铬** | 1d? | 2018-08-10 | 2018-08-10 |  |  | 47d |  |
| 56 |  | 确认需求内容 | 1d? | 2018-08-10 | 2018-08-10 |  |  | 47d | start no earlier than 2018-08-10 |
| 57 |  | 后续计划待定…… | 1d? | 2018-07-24 | 2018-07-24 |  |  |  |  |

## Version 2 (saved 2018-10-18)

Last finish 2018-10-17 → 2018-11-16 (+30d). Complete tasks 25 → 33.

Added:

| ID | Task | Duration | Start | Finish | Predecessors |
| --- | --- | --- | --- | --- | --- |
| 49 | 程序修改并测试 | 5d | 2018-10-15 A | 2018-10-19 A |  |
| 50 | 调质工序程序升级 | 1d | 2018-10-22 | 2018-10-22 | 49 |
| 51 | 实施并试运行 | 4d | 2018-10-23 | 2018-10-26 | 50 |
| 61 | 待解决项关闭 | 10d? | 2018-11-02 | 2018-11-15 | 33 |
| 62 | 验收 | 1d? | 2018-11-16 | 2018-11-16 | 60, 61 |

Changed:

| ID | Task | Start | Finish | Duration | Complete | Total float | Predecessors | Other |
| --- | --- | --- | --- | --- | --- | --- | --- | --- |
| 1 | **亚新科双环 MES III 期项目（批次管理系统）** |  | 2018-10-17 → 2018-11-16 (+30d) | 61d? → 80d? | 51% → 58% |  |  |  |
| 33 | **生产数据采集** |  | 2018-10-17 → 2018-11-01 (+15d) | 38d? → 46d? | 13% → 67% |  |  |  |
| 34 | **调质** |  | 2018-10-02 → 2018-10-26 (+24d) | 27d? → 42d? | 6% → 81% | 11d → 0d |  |  |
| 39 | **配置** | 2018-09-06 A | 2018-09-17 A |  | 0% → 100% | 16d → none |  |  |
| 40 | 加热炉 | 2018-09-06 A | 2018-09-07 A |  | 0% → 100% | 16d → none |  |  |
| 41 | 清洗炉 | 2018-09-10 A | 2018-09-11 A |  | 0% → 100% | 16d → none |  |  |
| 42 | 回火炉 | 2018-09-12 A | 2018-09-13 A |  | 0% → 100% | 16d → none |  |  |
| 43 | 质量检查和确认 | 2018-09-14 A | 2018-09-17 A |  | 0% → 100% | 16d → none |  |  |
| 44 | **开发** | 2018-09-19 A | 2018-09-25 A |  | 0% → 100% | 0d → none |  |  |
| 45 | 加热炉生产开发 | 2018-09-19 A | 2018-09-20 A |  | 0% → 100% |  |  |  |
| 46 | 清洗炉、回火炉生产开发 | 2018-09-21 A | 2018-09-25 A |  | 0% → 100% | 11d → none |  |  |
| 47 | 测试 | 2018-09-26 A | 2018-09-27 A |  | 0% → 100% | 11d → none |  |  |
| 48 | 调质工序流程与生产部门讨论 | 2018-09-28 → 2018-10-09 A (+11d) | 2018-10-02 → 2018-10-10 A (+8d) | 3d? → 2d | 0% → 100% | 11d → none | 47 → none | was named 实施 |
| 52 | **离子氮化** | 2018-09-03 A → 2018-09-03 | 2018-10-17 → 2018-11-01 (+15d) | 32d? → 40d | 40% → 0% |  | none → 34 |  |
| 54 | 配置 | 2018-09-03 A → 2018-10-24 (+51d) | 2018-09-04 A → 2018-10-25 (+51d) | 2d? → 2d | 100% → 0% |  | 53 → none |  |
| 55 | 测试 | 2018-10-15 → 2018-10-26 (+11d) | 2018-10-15 → 2018-10-26 (+11d) |  |  | 0d → none | 56 → 54 | constraint none → start no earlier than 2018-10-26 |
| 56 | 满足运行条件 | 2018-10-15 → 2018-10-30 (+15d) | 2018-10-15 → 2018-10-30 (+15d) |  |  |  | 54 → 55 |  |
| 57 | 实施并试运行 | 2018-10-16 → 2018-10-30 (+14d) | 2018-10-17 → 2018-11-01 (+15d) | 2d? → 3d |  |  | 55 → 56 | was named 实施 |
| 60 | 文档交付物编写 | 2018-07-24 → 2018-11-02 (+101d) | 2018-07-24 → 2018-11-08 (+107d) | 1d? → 5d |  |  | none → 33 | was named 后续计划待定…… |

## Version 3 (saved 2018-10-31)

Last finish 2018-11-16 → 2018-12-04 (+18d). Complete tasks 33 → 35.

Added:

| ID | Task | Duration | Start | Finish | Predecessors |
| --- | --- | --- | --- | --- | --- |
| 51 | 调质工序流程与生产部门再次讨论 | 2d | 2018-10-23 A | 2018-10-24 A | 50 |
| 52 | 程序开发 | 5d? | 2018-10-29 | 2018-11-02 | 51 |

Changed:

| ID | Task | Start | Finish | Duration | Complete | Total float | Predecessors | Other |
| --- | --- | --- | --- | --- | --- | --- | --- | --- |
| 1 | **亚新科双环 MES III 期项目（批次管理系统）** |  | 2018-11-16 → 2018-12-04 (+18d) | 80d? → 92d? | 58% → 57% |  |  |  |
| 33 | **生产数据采集** |  | 2018-11-01 → 2018-11-19 (+18d) | 46d? → 58d? | 67% → 63% |  |  |  |
| 34 | **调质** |  | 2018-10-26 → 2018-11-08 (+13d) | 42d? → 51d? | 81% → 74% |  |  |  |
| 50 | 调质工序程序升级 | 2018-10-22 A | 2018-10-22 A |  | 0% → 100% |  |  |  |
| 53 | 实施并试运行 | 2018-10-23 → 2018-11-05 (+13d) | 2018-10-26 → 2018-11-08 (+13d) |  |  |  | 50 → 52 |  |
| 54 | **离子氮化** |  | 2018-11-01 → 2018-11-19 (+18d) | 40d → 52d |  |  |  |  |
| 56 | 配置 | 2018-10-24 → 2018-11-12 (+19d) | 2018-10-25 → 2018-11-13 (+19d) |  |  |  |  |  |
| 57 | 测试 | 2018-10-26 → 2018-11-14 (+19d) | 2018-10-26 → 2018-11-14 (+19d) |  |  |  |  |  |
| 58 | 满足运行条件 | 2018-10-30 → 2018-11-15 (+16d) | 2018-10-30 → 2018-11-15 (+16d) |  |  |  |  |  |
| 59 | 实施并试运行 | 2018-10-30 → 2018-11-15 (+16d) | 2018-11-01 → 2018-11-19 (+18d) |  |  | 0d → none |  |  |
| 62 | 文档交付物编写 | 2018-11-02 → 2018-11-20 (+18d) | 2018-11-08 → 2018-11-26 (+18d) |  |  |  |  |  |
| 63 | 待解决项关闭(包括追溯报表的完善) | 2018-11-02 → 2018-11-20 (+18d) | 2018-11-15 → 2018-12-03 (+18d) |  |  |  |  | was named 待解决项关闭 |
| 64 | 验收 | 2018-11-16 → 2018-12-04 (+18d) | 2018-11-16 → 2018-12-04 (+18d) |  |  | 0d → none |  |  |
